# BarrocIT_planning

How a schedule from MS Project changed from version to version. A marks actual dates.

## Version 1 (saved 2015-09-30)

Note of the change: planning update

| ID | WBS | Task | Duration | Start | Finish | Predecessors | Complete | Total float |
| --- | --- | --- | --- | --- | --- | --- | --- | --- |
| 1 |  | Start | 0d | 2015-09-07 | 2015-09-07 |  |  |  |
| 2 | 2 | **Inception Phase** | 10.52d | 2015-09-07 A | 2015-09-25 |  | 72% | 1.81d |
| 3 |  | Interview voorbereiden | 1h | 2015-09-07 A | 2015-09-07 A |  | 100% |  |
| 4 |  | Interview houden en gesprekverslag terug koppelen | 0.3h | 2015-09-07 A | 2015-09-07 A | 3 | 100% |  |
| 5 |  | Hernieuwde opdracht | 5h | 2015-09-07 A | 2015-09-08 | 4 | 10% | 0.38d |
| 6 |  | Prototype van schermen gebaseerd op interview | 2h | 2015-09-08 A | 2015-09-09 | 5 | 95% | 0.98d |
| 7 |  | Offerte uitbrengen | 7h | 2015-09-09 A | 2015-09-11 | 6 | 70% | 9.27d |
| 8 |  | Agenda en notulen van elke vergadering | 0.3h | 2015-09-11 A | 2015-09-11 A | 7 | 100% |  |
| 9 |  | Plan van aanpak (incl risico analyse) | 14h | 2015-09-11 A | 2015-09-17 A | 8 | 100% |  |
| 10 |  | Globale planning voor het gehele project (MS Project) | 10h | 2015-09-17 A | 2015-09-22 A | 9 | 100% |  |
| 11 |  | Gedetailleerde taakverdeling van het functioneel ontwerp in MS Project | 2h | 2015-09-22 A | 2015-09-23 A | 10 | 100% |  |
| 12 |  | Use-case diagram | 2h | 2015-09-23 A | 2015-09-23 | 11 | 50% | 1.81d |
| 13 |  | Use-case templates | 2h | 2015-09-23 | 2015-09-24 | 12 |  | 1.81d |
| 14 |  | Activiteitendiagrammen | 4h | 2015-09-24 | 2015-09-25 | 13 |  | 1.81d |
| 15 | 3 | **Elaboration Phase** | 4.8d | 2015-09-25 | 2015-10-05 | 2 |  | 1.81d |
| 16 |  | Gedetailleerde taakverdeling van het technische ontwerp in MS Project | 2h | 2015-09-25 | 2015-09-25 |  |  | 1.81d |
| 17 |  | Modeldictionary | 3h | 2015-09-25 | 2015-09-28 | 16 |  | 1.81d |
| 18 |  | Klassendiagram | 3h | 2015-09-28 | 2015-09-29 | 17 |  | 1.81d |
| 19 |  | Ontwerp datadictionary | 4h | 2015-09-29 | 2015-09-30 | 18 |  | 1.81d |
| 20 |  | Sequentie diagrammen | 4h | 2015-09-30 | 2015-10-01 | 19 |  | 1.81d |
| 21 |  | Overzicht taakverdeling inrichten van de ontwikkelomgeving | 4h | 2015-10-01 | 2015-10-02 | 20 |  | 1.81d |
| 22 |  | Overzicht van de gebruikte hard- en software van de ingerichte ontwikkelomgeving | 4h | 2015-10-02 | 2015-10-05 | 21 |  | 1.81d |
| 23 | 4 | **Construction Phase** | 5.4d | 2015-10-05 | 2015-10-14 | 15 |  | 1.81d |
| 24 |  | Genormaliseerd databaseontwerp | 3h | 2015-10-05 | 2015-10-06 |  |  | 1.81d |
| 25 |  | Defenitieve datadictionery | 3h | 2015-10-06 | 2015-10-07 | 24 |  | 1.81d |
| 26 |  | De database (gebouwd) | 3h | 2015-10-07 | 2015-10-08 | 25 |  | 1.81d |
| 27 |  | Werkende solution/webapplicatie. Alle functionaliteit is gerealiseerd | 3h | 2015-10-08 | 2015-10-08 | 26 |  | 1.81d |
| 28 |  | Dataset | 3h | 2015-10-08 | 2015-10-09 | 27 |  | 1.81d |
| 29 |  | Technische test is gemaakt | 3h | 2015-10-09 | 2015-10-12 | 28 |  | 1.81d |
| 30 |  | Technische test is uitgevoerd | 3h | 2015-10-12 | 2015-10-13 | 29 |  | 1.81d |
| 31 |  | Functionele test is gemaakt | 3h | 2015-10-13 | 2015-10-14 | 30 |  | 1.81d |
| 32 |  | Functionele test is uitgevoerd | 3h | 2015-10-14 | 2015-10-14 | 31 |  | 1.81d |
| 33 | 5 | **Transition Phase** | 6.21d | 2015-10-14 | 2015-11-03 | 23 |  | 0d |
| 34 |  | Acceptatietest is uitgevoerd bij (gebruiker van) de opdracht gever | 8h | 2015-10-14 | 2015-10-16 |  |  | 1.81d |
| 35 |  | Gebruikershandleiding | 4h | 2015-10-16 | 2015-10-19 | 34 |  | 1.81d |
| 36 |  | Projectrapport | 4h | 2015-10-19 | 2015-10-21 | 35 |  | 1.81d |
| 37 |  | Teamrapport | 2h | 2015-10-21 | 2015-10-21 | 36 |  | 1.81d |
| 38 |  | Presentatie | 2h | 2015-10-21 | 2015-10-22 | 37 |  | 1.81d |
| 39 |  | Logboek Tijdregistratie | 2h | 2015-10-22 | 2015-10-22 | 38 |  | 1.81d |
| 40 |  | Einde | 0d | 2015-11-03 | 2015-11-03 |  |  |  |

## Version 2 (saved 2015-09-30)

Note of the change: offerte & planning

Last finish stays 2015-11-03. Complete tasks 6 → 4.

Added:

| ID | Task | Duration | Start | Finish |
| --- | --- | --- | --- | --- |
| 15 | mijlpaal 1: inception | 0.8d | 2015-09-07 | 2015-09-07 |
| 24 | mijlpaal 2: Construction | 0d | 2015-09-07 | 2015-09-07 |
| 35 | mijlpaal 3: Transition | 0d | 2015-09-07 | 2015-09-07 |

Changed:

| ID | Task | Start | Finish | Complete | Total float |
| --- | --- | --- | --- | --- | --- |
| 1 | Start | 2015-09-07 A | 2015-09-07 A | 0% → 100% |  |
| 2 | **Inception Phase** |  |  | 72% → 73% |  |
| 4 | Interview houden en gesprekverslag terug koppelen | 2015-09-07 A → 2015-09-07 | 2015-09-07 A → 2015-09-07 | 100% → 0% | none → 0.3d |
| 5 | Hernieuwde opdracht |  |  | 10% → 30% | 0.38d → 0.36d |
| 6 | Prototype van schermen gebaseerd op interview |  |  | 95% → 90% | 0.98d → 1.26d |
| 7 | Offerte uitbrengen |  |  | 70% → 90% |  |
| 9 | Plan van aanpak (incl risico analyse) |  | 2015-09-17 A → 2015-09-17 | 100% → 95% | none → 2.4d |
| 10 | Globale planning voor het gehele project (MS Project) |  | 2015-09-22 A → 2015-09-22 | 100% → 90% | none → 3.81d |

## Version 3 (saved 2015-09-30)

Note of the change: planning

Last finish stays 2015-11-03.

Added:

| ID | Task | Duration | Start | Finish | Constraint |
| --- | --- | --- | --- | --- | --- |
| 35 | deadline | 0d | 2015-10-14 | 2015-10-14 | must finish on 2015-10-14 |

Changed:

| ID | Task | Start | Duration | Total float |
| --- | --- | --- | --- | --- |
| 25 | **Construction Phase** |  | 5.4d → 5.48d | 1.81d → 1.73d |
| 37 | **Transition Phase** | 2015-10-14 → 2015-10-15 (+1d) | 6.21d → 6.13d |  |
| 38 | Acceptatietest is uitgevoerd bij (gebruiker van) de opdracht gever | 2015-10-14 → 2015-10-15 (+1d) |  | 1.81d → 1.73d |
| 39 | Gebruikershandleiding | 2015-10-16 → 2015-10-19 (+3d) |  | 1.81d → 1.73d |
| 40 | Projectrapport | 2015-10-19 → 2015-10-20 (+1d) |  | 1.81d → 1.73d |
