# BarrocIT_planning

How a schedule from MS Project changed from version to version. A marks actual dates.

## Version 1 (saved 2015-09-11)

Note of the change: planning

| ID | WBS | Task | Duration | Start | Finish | Predecessors | Complete | Total float |
| --- | --- | --- | --- | --- | --- | --- | --- | --- |
| 1 |  | Start | 0d | 2015-09-07 | 2015-09-07 |  |  |  |
| 2 | 2 | **Inception Phase** | 10.52d | 2015-09-07 A | 2015-09-25 |  | 28% | 1.81d |
| 3 |  | Interview voorbereiden | 1h | 2015-09-07 A | 2015-09-07 A |  | 100% |  |
| 4 |  | Interview houden en gesprekverslag terug koppelen | 0.3h | 2015-09-07 | 2015-09-07 | 3 |  | 0.04d |
| 5 |  | Hernieuwde opdracht | 5h | 2015-09-07 | 2015-09-08 | 4 |  | 0.04d |
| 6 |  | Prototype van schermen gebaseerd op interview | 2h | 2015-09-08 A | 2015-09-09 | 5 | 10% | 0.23d |
| 7 |  | Offerte uitbrengen | 7h | 2015-09-09 | 2015-09-11 | 6 |  | 0.23d |
| 8 |  | Agenda en notulen van elke vergadering | 0.3h | 2015-09-11 A | 2015-09-11 | 7 | 50% | 0.48d |
| 9 |  | Plan van aanpak (incl risico analyse) | 14h | 2015-09-11 A | 2015-09-17 | 8 | 17% | 6.21d |
| 10 |  | Globale planning voor het gehele project (MS Project) | 10h | 2015-09-17 A | 2015-09-22 A | 9 | 100% |  |
| 11 |  | Gedetailleerde taakverdeling van het functioneel ontwerp in MS Project | 2h | 2015-09-22 | 2015-09-23 | 10 |  | 1.81d |
| 12 |  | Use-case diagram | 2h | 2015-09-23 | 2015-09-23 | 11 |  | 1.81d |
| 13 |  | Use-case templates | 2h | 2015-09-23 | 2015-09-24 | 12 |  | 1.81d |
| 14 |  | Activiteitendiagrammen | 4h | 2015-09-24 | 2015-09-25 | 13 |  | 1.81d |
| 15 | 3 | **Elaboration Phase** | 4.8d | 2015-09-25 | 2015-10-05 | 2 |  | 1.81d |
| 16 |  | Gedetailleerde taakverdeling van het technische ontwerp in MS Project | 2h | 2015-09-25 | 2015-09-25 |  |  | 1.81d |
| 17 |  | Modeldictionary | 3h | 2015-09-25 | 2015-09-28 | 16 |  | 1.81d |
| 18 |  | Klassendiagram | 3h | 2015-09-28 | 2015-09-29 | 17 |  | 1.81d |
| 19 |  | Ontwerp datadictionary | 4h | 2015-09-29 | 2015-09-30 | 18 |  | 1.81d |
| 20 |  | Sequentie diagrammen | 4h | 2015-09-30 | 2015-10-01 | 19 |  | 1.81d |
| 21 |  | Overzicht taakverdeling inrichten van de ontwikkelomgeving | 4h | 2015-10-01 | 2015-10-02 | 20 |  | 1.81d |
| 22 |  | Overzicht van de gebruikte hard- en software van de ingerichte ontwikkelomgeving | 4h | 2015-10-02 | 2015-10-05 | 21 |  | 1.81d |
| 23 | 4 | **Construction Phase** | 5.4d | 2015-10-05 | 2015-10-14 | 15 |  | 1.81d |
| 24 |  | Genormaliseerd databaseontwerp | 3h | 2015-10-05 | 2015-10-06 |  |  | 1.81d |
| 25 |  | Defenitieve datadictionery | 3h | 2015-10-06 | 2015-10-07 | 24 |  | 1.81d |
| 26 |  | De database (gebouwd) | 3h | 2015-10-07 | 2015-10-08 | 25 |  | 1.81d |
| 27 |  | Werkende solution/webapplicatie. Alle functionaliteit is gerealiseerd | 3h | 2015-10-08 | 2015-10-08 | 26 |  | 1.81d |
| 28 |  | Dataset | 3h | 2015-10-08 | 2015-10-09 | 27 |  | 1.81d |
| 29 |  | Technische test is gemaakt | 3h | 2015-10-09 | 2015-10-12 | 28 |  | 1.81d |
| 30 |  | Technische test is uitgevoerd | 3h | 2015-10-12 | 2015-10-13 | 29 |  | 1.81d |
| 31 |  | Functionele test is gemaakt | 3h | 2015-10-13 | 2015-10-14 | 30 |  | 1.81d |
| 32 |  | Functionele test is uitgevoerd | 3h | 2015-10-14 | 2015-10-14 | 31 |  | 1.81d |
| 33 | 5 | **Transition Phase** | 6.21d | 2015-10-14 | 2015-11-03 | 23 |  | 0d |
| 34 |  | Acceptatietest is uitgevoerd bij (gebruiker van) de opdracht gever | 8h | 2015-10-14 | 2015-10-16 |  |  | 1.81d |
| 35 |  | Gebruikershandleiding | 4h | 2015-10-16 | 2015-10-19 | 34 |  | 1.81d |
| 36 |  | Projectrapport | 4h | 2015-10-19 | 2015-10-21 | 35 |  | 1.81d |
| 37 |  | Teamrapport | 2h | 2015-10-21 | 2015-10-21 | 36 |  | 1.81d |
| 38 |  | Presentatie | 2h | 2015-10-21 | 2015-10-22 | 37 |  | 1.81d |
| 39 |  | Logboek Tijdregistratie | 2h | 2015-10-22 | 2015-10-22 | 38 |  | 1.81d |
| 40 |  | Einde | 0d | 2015-11-03 | 2015-11-03 |  |  |  |

## Version 2 (saved 2015-09-14)

Note of the change: planning aangepast

Last finish stays 2015-11-03.

Changed:

| ID | Task | Other |
| --- | --- | --- |
| 3 | Interview voorbereiden | resources Kees Elsman; Floris van Broekhoven; Tarik Hacialiogullari → Tom Smits; Santino Bonora; Steven Logghe |
| 4 | Interview houden en gesprekverslag terug koppelen | resources Floris van Broekhoven; Kees Elsman; Tarik Hacialiogullari → Santino Bonora; Tom Smits; Steven Logghe |
| 5 | Hernieuwde opdracht | resources Floris van Broekhoven → Santino Bonora |
| 6 | Prototype van schermen gebaseerd op interview | resources Tarik Hacialiogullari → Steven Logghe |
| 7 | Offerte uitbrengen | resources Kees Elsman → Tom Smits |
| 8 | Agenda en notulen van elke vergadering | resources Kees Elsman → Tom Smits |
| 9 | Plan van aanpak (incl risico analyse) | resources Floris van Broekhoven; Kees Elsman → Santino Bonora; Tom Smits |
| 10 | Globale planning voor het gehele project (MS Project) | resources Kees Elsman; Tarik Hacialiogullari → Tom Smits; Steven Logghe |
| 11 | Gedetailleerde taakverdeling van het functioneel ontwerp in MS Project | resources Tarik Hacialiogullari → Steven Logghe |
| 12 | Use-case diagram | resources Floris van Broekhoven; Kees Elsman; Tarik Hacialiogullari → Santino Bonora; Tom Smits; Steven Logghe |
| 13 | Use-case templates | resources Floris van Broekhoven; Kees Elsman; Tarik Hacialiogullari → Santino Bonora; Tom Smits; Steven Logghe |
| 14 | Activiteitendiagrammen | resources Floris van Broekhoven; Kees Elsman; Tarik Hacialiogullari → Santino Bonora; Tom Smits; Steven Logghe |
| 16 | Gedetailleerde taakverdeling van het technische ontwerp in MS Project | resources Tarik Hacialiogullari → Steven Logghe |
| 17 | Modeldictionary | resources Floris van Broekhoven; Kees Elsman; Tarik Hacialiogullari → Santino Bonora; Tom Smits; Steven Logghe |
| 18 | Klassendiagram | resources Kees Elsman → Tom Smits |
| 19 | Ontwerp datadictionary | resources Floris van Broekhoven; Kees Elsman; Tarik Hacialiogullari → Santino Bonora; Tom Smits; Steven Logghe |
| 20 | Sequentie diagrammen | resources Floris van Broekhoven; Kees Elsman; Tarik Hacialiogullari → Santino Bonora; Tom Smits; Steven Logghe |
| 21 | Overzicht taakverdeling inrichten van de ontwikkelomgeving | resources Floris van Broekhoven; Kees Elsman → Santino Bonora; Tom Smits |
| 22 | Overzicht van de gebruikte hard- en software van de ingerichte ontwikkelomgeving | resources Tarik Hacialiogullari → Steven Logghe |
| 24 | Genormaliseerd databaseontwerp | resources Tarik Hacialiogullari → Steven Logghe |
| 25 | Defenitieve datadictionery | resources Floris van Broekhoven → Santino Bonora |
| 26 | De database (gebouwd) | resources Kees Elsman; Tarik Hacialiogullari → Tom Smits; Steven Logghe |
| 27 | Werkende solution/webapplicatie. Alle functionaliteit is gerealiseerd | resources Kees Elsman → Tom Smits |
| 28 | Dataset | resources Kees Elsman; Tarik Hacialiogullari → Tom Smits; Steven Logghe |
| 29 | Technische test is gemaakt | resources Floris van Broekhoven → Santino Bonora |
| 30 | Technische test is uitgevoerd | resources Floris van Broekhoven; Kees Elsman; Tarik Hacialiogullari → Santino Bonora; Tom Smits; Steven Logghe |
| 31 | Functionele test is gemaakt | resources Floris van Broekhoven → Santino Bonora |
| 32 | Functionele test is uitgevoerd | resources Floris van Broekhoven; Kees Elsman; Tarik Hacialiogullari → Santino Bonora; Tom Smits; Steven Logghe |
| 34 | Acceptatietest is uitgevoerd bij (gebruiker van) de opdracht gever | resources Floris van Broekhoven; Kees Elsman; Tarik Hacialiogullari → Santino Bonora; Tom Smits; Steven Logghe |
| 35 | Gebruikershandleiding | resources Floris van Broekhoven; Kees Elsman; Tarik Hacialiogullari → Santino Bonora; Tom Smits; Steven Logghe |
| 36 | Projectrapport | resources Floris van Broekhoven; Kees Elsman; Tarik Hacialiogullari → Santino Bonora; Tom Smits; Steven Logghe |
| 37 | Teamrapport | resources Floris van Broekhoven; Kees Elsman; Tarik Hacialiogullari → Santino Bonora; Tom Smits; Steven Logghe |
| 38 | Presentatie | resources Floris van Broekhoven; Kees Elsman; Tarik Hacialiogullari → Santino Bonora; Tom Smits; Steven Logghe |
| 39 | Logboek Tijdregistratie | resources Floris van Broekhoven; Kees Elsman; Tarik Hacialiogullari → Santino Bonora; Tom Smits; Steven Logghe |

## Version 3 (saved 2015-09-14)

Note of the change: planning verbeterd

Last finish stays 2015-11-03. Complete tasks 2 → 3.

Changed:

| ID | Task | Start | Finish | Complete | Total float | Other |
| --- | --- | --- | --- | --- | --- | --- |
| 2 | **Inception Phase** |  |  | 28% → 23% |  |  |
| 3 | Interview voorbereiden |  |  |  |  | resources Tom Smits; Santino Bonora; Steven Logghe → Santino Bonora; Steven Logghe; Tom Smits |
| 4 | Interview houden en gesprekverslag terug koppelen | 2015-09-07 A | 2015-09-07 A | 0% → 100% | 0.04d → none | resources Santino Bonora; Tom Smits; Steven Logghe → Steven Logghe; Santino Bonora; Tom Smits |
| 5 | Hernieuwde opdracht |  |  |  |  | resources Santino Bonora → Steven Logghe |
| 6 | Prototype van schermen gebaseerd op interview |  |  | 10% → 5% | 0.23d → 6.41d | resources Steven Logghe → Tom Smits |
| 7 | Offerte uitbrengen |  |  |  |  | resources Tom Smits → Santino Bonora |
| 8 | Agenda en notulen van elke vergadering | 2015-09-11 A → 2015-09-11 |  | 50% → 0% | 0.48d → 6.41d | resources Tom Smits → Santino Bonora |
| 9 | Plan van aanpak (incl risico analyse) | 2015-09-11 A → 2015-09-11 |  | 17% → 0% | 6.21d → 6.41d | resources Santino Bonora; Tom Smits → Steven Logghe; Santino Bonora |
| 10 | Globale planning voor het gehele project (MS Project) |  |  |  |  | resources Tom Smits; Steven Logghe → Santino Bonora; Tom Smits |
| 11 | Gedetailleerde taakverdeling van het functioneel ontwerp in MS Project |  |  |  |  | resources Steven Logghe → Tom Smits |
| 12 | Use-case diagram |  |  |  |  | resources Santino Bonora; Tom Smits; Steven Logghe → Steven Logghe; Santino Bonora; Tom Smits |
| 13 | Use-case templates |  |  |  |  | resources Santino Bonora; Tom Smits; Steven Logghe → Steven Logghe; Santino Bonora; Tom Smits |
| 14 | Activiteitendiagrammen |  |  |  |  | resources Santino Bonora; Tom Smits; Steven Logghe → Steven Logghe; Santino Bonora; Tom Smits |
| 16 | Gedetailleerde taakverdeling van het technische ontwerp in MS Project |  |  |  |  | resources Steven Logghe → Tom Smits |
| 17 | Modeldictionary |  |  |  |  | resources Santino Bonora; Tom Smits; Steven Logghe → Steven Logghe; Santino Bonora; Tom Smits |
| 18 | Klassendiagram |  |  |  |  | resources Tom Smits → Santino Bonora |
| 19 | Ontwerp datadictionary |  |  |  |  | resources Santino Bonora; Tom Smits; Steven Logghe → Steven Logghe; Santino Bonora; Tom Smits |
| 20 | Sequentie diagrammen |  |  |  |  | resources Santino Bonora; Tom Smits; Steven Logghe → Steven Logghe; Santino Bonora; Tom Smits |
| 21 | Overzicht taakverdeling inrichten van de ontwikkelomgeving |  |  |  |  | resources Santino Bonora; Tom Smits → Steven Logghe; Santino Bonora |
| 22 | Overzicht van de gebruikte hard- en software van de ingerichte ontwikkelomgeving |  |  |  |  | resources Steven Logghe → Tom Smits |
| 24 | Genormaliseerd databaseontwerp |  |  |  |  | resources Steven Logghe → Tom Smits |
| 25 | Defenitieve datadictionery |  |  |  |  | resources Santino Bonora → Steven Logghe |
| 26 | De database (gebouwd) |  |  |  |  | resources Tom Smits; Steven Logghe → Santino Bonora; Tom Smits |
| 27 | Werkende solution/webapplicatie. Alle functionaliteit is gerealiseerd |  |  |  |  | resources Tom Smits → Santino Bonora |
| 28 | Dataset |  |  |  |  | resources Tom Smits; Steven Logghe → Santino Bonora; Tom Smits |
| 29 | Technische test is gemaakt |  |  |  |  | resources Santino Bonora → Steven Logghe |
| 30 | Technische test is uitgevoerd |  |  |  |  | resources Santino Bonora; Tom Smits; Steven Logghe → Steven Logghe; Santino Bonora; Tom Smits |
| 31 | Functionele test is gemaakt |  |  |  |  | resources Santino Bonora → Steven Logghe |
| 32 | Functionele test is uitgevoerd |  |  |  |  | resources Santino Bonora; Tom Smits; Steven Logghe → Steven Logghe; Santino Bonora; Tom Smits |
| 34 | Acceptatietest is uitgevoerd bij (gebruiker van) de opdracht gever |  |  |  |  | resources Santino Bonora; Tom Smits; Steven Logghe → Steven Logghe; Santino Bonora; Tom Smits |
| 35 | Gebruikershandleiding |  |  |  |  | resources Santino Bonora; Tom Smits; Steven Logghe → Steven Logghe; Santino Bonora; Tom Smits |
| 36 | Projectrapport |  |  |  |  | resources Santino Bonora; Tom Smits; Steven Logghe → Steven Logghe; Santino Bonora; Tom Smits |
| 37 | Teamrapport |  |  |  |  | resources Santino Bonora; Tom Smits; Steven Logghe → Steven Logghe; Santino Bonora; Tom Smits |
| 38 | Presentatie |  |  |  |  | resources Santino Bonora; Tom Smits; Steven Logghe → Steven Logghe; Santino Bonora; Tom Smits |
| 39 | Logboek Tijdregistratie |  |  |  |  | resources Santino Bonora; Tom Smits; Steven Logghe → Steven Logghe; Santino Bonora; Tom Smits |
